# P007_SISTEMA_KARCE

How a schedule from MS Project changed from version to version. A marks actual dates.

## Version 1 (data date 2025-06-02, saved 2025-06-03, file P007_SISTEMA_KARCE.mpp)

Note of the change: Agregada la carpeta DOCs con mpp y xml

| ID | WBS | Task | Duration | Start | Finish | Predecessors | Complete | Total float | Constraint |
| --- | --- | --- | --- | --- | --- | --- | --- | --- | --- |
| 1 | 1 | **P007 - REPOSICIÓN SEDE SOCIAL JV KATHERINE ARCE PRB BARRIO KATHERINE ARCE-SANTA ROSA** | 14d | 2025-06-02 A | 2025-06-24 |  | 11% | 0d |  |
| 2 | 1.1 | **FORMULACION DE PROYECTO** | 14d | 2025-06-02 A | 2025-06-24 |  |  | 0d |  |
| 3 | 1.1.1 | **DOCUMENTOS** | 14d | 2025-06-02 A | 2025-06-24 |  |  | 0d |  |
| 4 |  | Formulario Presentacion de Proyecto FRIL | 3d | 2025-06-18 | 2025-06-24 | 10, 59, 26, 36, 48, 65 |  | 0d | as late as possible |
| 5 |  | Compromiso de Mantencion y Gastos Operacionales | 1d | 2025-06-02 | 2025-06-03 |  |  | 13d |  |
| 6 |  | Certificado Dominio Vigente | 1d | 2025-06-02 | 2025-06-03 |  |  | 9d |  |
| 7 |  | Certificado de Numero | 1d | 2025-06-02 | 2025-06-03 |  |  | 9d |  |
| 8 |  | Certificado de Informes Previos | 1d | 2025-06-02 | 2025-06-03 |  |  | 13d |  |
| 9 |  | Documentos Varios | 1d | 2025-06-02 | 2025-06-03 |  |  | 13d |  |
| 10 | 1.2 | **ARQUITECTURA** | 9d | 2025-06-02 A | 2025-06-16 |  | 8% | 2d |  |
| 11 | 1.2.1 | **DOCUMENTOS** | 5d | 2025-06-06 | 2025-06-16 |  |  | 2d |  |
| 12 |  | Relleno de Formulario DOM AP (Ingreso DOM) | 1d | 2025-06-12 | 2025-06-13 | 16, 17, 18, 19, 20, 21, 22, 23, 24 |  | 3d |  |
| 13 |  | Especifiaciones Tecnicas - Arquitectura | 2d | 2025-06-12 | 2025-06-16 | 16, 17, 18, 19, 20, 21, 22, 23, 24 |  | 2d |  |
| 14 |  | Memoria de Diseño universal | 1d | 2025-06-06 | 2025-06-09 | 19 |  | 6d |  |
| 15 | 1.2.2 | **ANTECEDENTES** | 8d | 2025-06-02 A | 2025-06-13 |  | 10% | 0d |  |
| 16 |  | Plano Lamina Normativa - Emplazamiento | 1d | 2025-06-03 | 2025-06-04 | 17 |  | 5.2d |  |
| 17 |  | Pano Planta de Arquitectura 1/50 - Todos los Pisos | 1d | 2025-06-02 A | 2025-06-03 A |  | 100% |  |  |
| 18 |  | Plano Secciones y Elevaciones 1/50 | 1d | 2025-06-03 A | 2025-06-04 A | 17 | 100% |  |  |
| 19 |  | Plano de Accesibilidad Universal | 3d | 2025-06-03 | 2025-06-06 | 17 |  | 3.2d |  |
| 20 |  | Plano Detalle de Puerta y Ventana | 3d | 2025-06-03 | 2025-06-06 | 17 |  | 0.2d |  |
| 21 |  | Plano Detalle de Areas Humedas | 3d | 2025-06-03 | 2025-06-06 | 17 |  | 3.2d |  |
| 22 |  | Plano Detalles Constructivos | 3d | 2025-06-06 | 2025-06-11 | 20 |  | 0.2d |  |
| 23 |  | Plano Detalle de Cierre Perimetral | 3d | 2025-06-06 | 2025-06-11 | 20 |  | 0.2d |  |
| 24 |  | Plano Detalles Complementarios | 3d | 2025-06-06 | 2025-06-11 | 20 |  | 0.2d |  |
| 25 |  | Armado de Laminas Presentacion | 1d | 2025-06-12 A | 2025-06-13 | 16, 17, 18, 19, 20, 21, 22, 23, 24 | 20% | 0d |  |
| 26 | 1.3 | **ESTRUCTURA** | 4d | 2025-06-02 | 2025-06-06 |  |  | 0d |  |
| 27 | 1.3.1 | **DOCUMENTOS** | 4d | 2025-06-02 | 2025-06-06 |  |  | 0d |  |
| 28 |  | Memoria de Calculo | 1d | 2025-06-05 | 2025-06-06 | 32, 33, 34, 35 |  | 7d |  |
| 29 |  | Especificaciones Tecnicas - Estructura | 1d | 2025-06-05 | 2025-06-06 | 32, 33, 34, 35 |  | 7d |  |
| 30 |  | Mecanica de Suelo | 1d | 2025-06-02 | 2025-06-03 |  |  | 10d |  |
| 31 | 1.3.2 | **ANTECEDENTES** | 2d | 2025-06-03 | 2025-06-05 |  |  | 5d |  |
| 32 |  | Plano Planta de Fundacion 1/50 - Detalles | 2d | 2025-06-03 | 2025-06-05 | 17 |  | 5d |  |
| 33 |  | Plano Planta de Estructura 1/50 Todos los Pisos - Detalles | 2d | 2025-06-03 | 2025-06-05 | 17 |  | 5d |  |
| 34 |  | Plano Planta de Estructura Cubierta - Detalles | 2d | 2025-06-03 | 2025-06-05 | 17 |  | 5d |  |
| 35 |  | Plano Elevaciones Ejes Estructurales | 2d | 2025-06-03 | 2025-06-05 | 17 |  | 5d |  |
| 36 | 1.4 | **SANITARIO** | 5d | 2025-06-03 A | 2025-06-10 |  | 45% | 5d |  |
| 37 | 1.4.1 | **DOCUMENTOS** | 5d | 2025-06-03 A | 2025-06-10 |  | 62% | 5d |  |
| 38 |  | Factibilidad Sanitaria (Tramitacion Solicitud) | 1d | 2025-06-03 | 2025-06-04 | 6, 7 |  | 9d |  |
| 39 |  | Memoria de Calculo | 2d | 2025-06-06 A | 2025-06-10 A | 46, 47 | 100% |  |  |
| 40 |  | Cuadro de Presion AP | 2d | 2025-06-06 A | 2025-06-10 A | 46, 47 | 100% |  |  |
| 41 |  | Especificaciones Tecnicas AP | 2d | 2025-06-06 A | 2025-06-10 A | 46, 47 | 100% |  |  |
| 42 |  | Especificaciones Tecnicas ALC | 2d | 2025-06-06 A | 2025-06-10 A | 46, 47 | 100% |  |  |
| 43 |  | Itemizado Seccion Sanitario | 2d | 2025-06-06 | 2025-06-10 | 46, 47 |  | 2d |  |
| 44 |  | APU Especialidad Sanitario | 2d | 2025-06-06 | 2025-06-10 | 46, 47 |  | 5d |  |
| 45 | 1.4.2 | **ANTECEDENTES** | 3d | 2025-06-03 A | 2025-06-06 |  | 10% | 2d |  |
| 46 |  | Plano Planta de Distribusion AP-AF - Todos los Pisos - Detalles | 3d | 2025-06-03 A | 2025-06-06 | 17 | 10% | 2d |  |
| 47 |  | Plano Planta de Distribucion ALC - Todos los Pisos - Detalles | 3d | 2025-06-03 A | 2025-06-06 | 17 | 10% | 2d |  |
| 48 | 1.5 | **ELECTRICO** | 5d | 2025-06-02 | 2025-06-09 |  |  | 3d |  |
| 49 | 1.5.1 | **DOCUMENTOS** | 2d | 2025-06-05 | 2025-06-09 |  |  | 3d |  |
| 50 |  | Factibilidad Electrica (Tramitacion Solicitud) | 2d | 2025-06-05 | 2025-06-09 | 56, 57, 58 |  | 6d |  |
| 51 |  | Memoria de Calculo | 2d | 2025-06-05 | 2025-06-09 | 56, 57, 58 |  | 6d |  |
| 52 |  | Especificaciones Tecnicas ELEC | 2d | 2025-06-05 | 2025-06-09 | 56, 57, 58 |  | 6d |  |
| 53 |  | Itemizado Seccion Electricidad | 2d | 2025-06-05 | 2025-06-09 | 56, 57, 58 |  | 3d |  |
| 54 |  | APU Especialidad Electricidad | 2d | 2025-06-05 | 2025-06-09 | 56, 57, 58 |  | 6d |  |
| 55 | 1.5.2 | **ANTECEDENTES** | 3d | 2025-06-02 | 2025-06-05 |  |  | 3d |  |
| 56 |  | Plano Planta de Alumbrado (Circuito y Canalizacion) - Todos los Pisos - Detalles | 3d | 2025-06-02 | 2025-06-05 |  |  | 3d |  |
| 57 |  | Plano Planta de Enchufe (Circuito y Canalizacion) - Todos los Pisos - Detalles | 3d | 2025-06-02 | 2025-06-05 |  |  | 3d |  |
| 58 |  | Plano Detalle Esquema Unifilar - Cuadro de Carga | 3d | 2025-06-02 | 2025-06-05 |  |  | 3d |  |
| 59 | 1.6 | **PRESUPUESTO** | 3d | 2025-06-13 | 2025-06-18 |  |  | 0d |  |
| 60 | 1.6.1 | **DOCUMENTOS** | 3d | 2025-06-13 | 2025-06-18 |  |  | 0d |  |
| 61 |  | APU - Generales | 3d | 2025-06-13 | 2025-06-18 | 15, 31, 43, 53 |  | 0d |  |
| 62 |  | Itemizado Presupeusto Alternativa A | 3d | 2025-06-13 | 2025-06-18 | 15, 31, 43, 53 |  | 0d |  |
| 63 |  | Itemizado Presupeusto Alternativa B | 3d | 2025-06-13 | 2025-06-18 | 15, 31, 43, 53 |  | 0d |  |
| 64 |  | Programa de Ejecucion - Plazo Estimado | 3d | 2025-06-13 | 2025-06-18 | 15, 31, 43, 53 |  | 0d |  |
| 65 | 1.7 | **TOPOGRAFIA** | 1d | 2025-06-02 | 2025-06-03 |  |  | 10d |  |
| 66 | 1.7.1 | **ANTECEDENTE** | 1d | 2025-06-02 | 2025-06-03 |  |  | 10d |  |
| 67 |  | Plano Planta Topografica Situacion Existente | 1d | 2025-06-02 | 2025-06-03 |  |  | 10d |  |
| 68 |  | Secciones Perfiles Topograficos Situacion Existente | 1d | 2025-06-02 | 2025-06-03 |  |  | 10d |  |

## Version 2 (data date 2025-06-02, saved 2025-06-03, file P011_SISTEMA_CII-III.mpp)

Note of the change: Agregada la carpeta DOCs con mpp y xml

Last finish 2025-06-24 → 2025-06-18 (-6d). Complete tasks 6 → 2.

Removed: 20 Plano Detalle de Puerta y Ventana; 21 Plano Detalle de Areas Humedas; 23 Plano Detalle de Cierre Perimetral; 33 Plano Planta de Estructura 1/50 Todos los Pisos - Detalles; 34 Plano Planta de Estructura Cubierta - Detalles; 35 Plano Elevaciones Ejes Estructurales; 36 SANITARIO; 37 DOCUMENTOS; 38 Factibilidad Sanitaria (Tramitacion Solicitud); 39 Memoria de Calculo; 40 Cuadro de Presion AP; 41 Especificaciones Tecnicas AP; 42 Especificaciones Tecnicas ALC; 43 Itemizado Seccion Sanitario; 44 APU Especialidad Sanitario; 45 ANTECEDENTES; 46 Plano Planta de Distribusion AP-AF - Todos los Pisos - Detalles; 47 Plano Planta de Distribucion ALC - Todos los Pisos - Detalles; 57 Plano Planta de Enchufe (Circuito y Canalizacion) - Todos los Pisos - Detalles

Changed:

| ID | Task | Start | Finish | Duration | Complete | Total float | Predecessors | Other |
| --- | --- | --- | --- | --- | --- | --- | --- | --- |
| 1 | **P011 - CONSTRUCCIÓN VÍA SEMIPEATONAL Y CRUCES PEATONALES PRB BARRIO CALICHE II Y III** |  | 2025-06-24 → 2025-06-18 (-6d) | 14d → 11d | 11% → 6% |  |  | was named P007 - REPOSICIÓN SEDE SOCIAL JV KATHERINE ARCE PRB BARRIO KATHERINE ARCE-SANTA ROSA |
| 2 | **FORMULACION DE PROYECTO** | 2025-06-02 A → 2025-06-02 | 2025-06-24 → 2025-06-18 (-6d) | 14d → 11d |  |  |  |  |
| 3 | **DOCUMENTOS** | 2025-06-02 A → 2025-06-02 | 2025-06-24 → 2025-06-18 (-6d) | 14d → 11d |  |  |  |  |
| 4 | Formulario Presentacion de Proyecto FRIL | 2025-06-18 → 2025-06-13 (-5d) | 2025-06-24 → 2025-06-18 (-6d) |  |  |  | 10, 40, 23, SANITARIO, 30, 46 → 10, 40, 23, 30, 46 |  |
| 10 | **ARQUITECTURA** |  | 2025-06-16 → 2025-06-10 (-6d) | 9d → 6d | 8% → 21% |  |  | resources Tamara Barraza → Daniel Quian |
| 11 | **DOCUMENTOS** |  | 2025-06-16 → 2025-06-10 (-6d) | 5d → 2d |  |  |  | resources Tamara Barraza → Daniel Quian |
| 12 | Relleno de Formulario DOM (Ingreso DOM) | 2025-06-12 → 2025-06-06 (-6d) | 2025-06-13 → 2025-06-09 (-4d) |  |  |  | 16, 17, 18, 19, Plano Detalle de Puerta y Ventana, Plano Detalle de Areas Humedas, 20, Plano Detalle de Cierre Perimetral, 21 → 16, 17, 18, 19, 20, 21 | was named Relleno de Formulario DOM AP (Ingreso DOM); resources Tamara Barraza → Daniel Quian |
| 13 | Especifiaciones Tecnicas - Arquitectura | 2025-06-12 → 2025-06-06 (-6d) | 2025-06-16 → 2025-06-10 (-6d) |  |  |  | 16, 17, 18, 19, Plano Detalle de Puerta y Ventana, Plano Detalle de Areas Humedas, 20, Plano Detalle de Cierre Perimetral, 21 → 16, 17, 18, 19, 20, 21 | resources Tamara Barraza → Daniel Quian |
| 14 | Memoria de Diseño universal |  |  |  |  | 6d → 3d |  | resources Tamara Barraza → Daniel Quian |
| 15 | **ANTECEDENTES** |  | 2025-06-13 → 2025-06-09 (-4d) | 8d → 5d | 10% → 27% |  |  | resources Tamara Barraza → Daniel Quian |
| 16 | Plano Lamina Normativa - Emplazamiento |  |  |  |  | 5.2d → 2d |  | resources Tamara Barraza → Daniel Quian |
| 17 | Pano Planta de Arquitectura 1/50 - Todos los Pisos |  |  |  |  |  |  | resources Tamara Barraza → Daniel Quian |
| 18 | Plano Secciones y Elevaciones 1/50 |  |  |  |  |  |  | resources Tamara Barraza → Daniel Quian |
| 19 | Plano de Accesibilidad Universal |  |  |  |  | 3.2d → 0d |  | resources Tamara Barraza → Daniel Quian |
| 20 | Plano Detalles Constructivos | 2025-06-06 → 2025-06-02 A (-4d) | 2025-06-11 → 2025-06-05 (-6d) |  | 0% → 25% | 0.2d → 1d | Plano Detalle de Puerta y Ventana → none | resources Tamara Barraza → Daniel Quian |
| 21 | Plano Detalles Complementarios | 2025-06-06 → 2025-06-02 A (-4d) | 2025-06-11 → 2025-06-05 (-6d) |  | 0% → 25% | 0.2d → 1d | Plano Detalle de Puerta y Ventana → none | resources Tamara Barraza → Daniel Quian |
| 22 | Armado de Laminas Presentacion | 2025-06-12 A → 2025-06-06 (-6d) | 2025-06-13 → 2025-06-09 (-4d) |  | 20% → 0% |  | 16, 17, 18, 19, Plano Detalle de Puerta y Ventana, Plano Detalle de Areas Humedas, 20, Plano Detalle de Cierre Perimetral, 21 → 16, 17, 18, 19, 20, 21 | resources Tamara Barraza → Daniel Quian |
| 23 | **ESTRUCTURA** |  | 2025-06-06 → 2025-06-09 (+3d) | 4d → 5d |  | 0d → 2d |  | resources Jason Apablaza → Gonzalo Reyes |
| 24 | **DOCUMENTOS** |  | 2025-06-06 → 2025-06-09 (+3d) | 4d → 5d |  | 0d → 3d |  | resources Jason Apablaza → Gonzalo Reyes |
| 25 | Memoria de Calculo | 2025-06-05 → 2025-06-06 (+1d) | 2025-06-06 → 2025-06-09 (+3d) |  |  | 7d → 3d | 29, Plano Planta de Estructura 1/50 Todos los Pisos - Detalles, Plano Planta de Estructura Cubierta - Detalles, Plano Elevaciones Ejes Estructurales → 29 | resources Jason Apablaza → Gonzalo Reyes |
| 26 | Especificaciones Tecnicas - Estructura | 2025-06-05 → 2025-06-06 (+1d) | 2025-06-06 → 2025-06-09 (+3d) |  |  | 7d → 3d | 29, Plano Planta de Estructura 1/50 Todos los Pisos - Detalles, Plano Planta de Estructura Cubierta - Detalles, Plano Elevaciones Ejes Estructurales → 29 | resources Jason Apablaza → Gonzalo Reyes |
| 27 | Mecanica de Suelo |  |  |  |  | 10d → 7d |  | resources Jason Apablaza → Gonzalo Reyes |
| 28 | **ANTECEDENTES** |  | 2025-06-05 → 2025-06-06 (+1d) | 2d → 3d |  | 5d → 1d |  | resources Jason Apablaza → Gonzalo Reyes |
| 29 | Plano Planta de Pavimento 1/50 - Detalles |  | 2025-06-05 → 2025-06-06 (+1d) | 2d → 3d |  | 5d → 1d |  | was named Plano Planta de Fundacion 1/50 - Detalles; resources Jason Apablaza → Gonzalo Reyes |
| 30 | **ELECTRICO** |  |  |  |  | 3d → 0d |  | resources David Gonzales → Sebastian Garcia |
| 31 | **DOCUMENTOS** |  |  |  |  | 3d → 0d |  | resources David Gonzales → Sebastian Garcia |
| 32 | Factibilidad Electrica (Tramitacion Solicitud) |  |  |  |  | 6d → 3d | 38, Plano Planta de Enchufe (Circuito y Canalizacion) - Todos los Pisos - Detalles, 39 → 38, 39 | resources David Gonzales → Sebastian Garcia |
| 33 | Memoria de Calculo |  |  |  |  | 6d → 3d | 38, Plano Planta de Enchufe (Circuito y Canalizacion) - Todos los Pisos - Detalles, 39 → 38, 39 | resources David Gonzales → Sebastian Garcia |
| 34 | Especificaciones Tecnicas ELEC |  |  |  |  | 6d → 3d | 38, Plano Planta de Enchufe (Circuito y Canalizacion) - Todos los Pisos - Detalles, 39 → 38, 39 | resources David Gonzales → Sebastian Garcia |
| 35 | Itemizado Seccion Electricidad |  |  |  |  | 3d → 0d | 38, Plano Planta de Enchufe (Circuito y Canalizacion) - Todos los Pisos - Detalles, 39 → 38, 39 | resources David Gonzales → Sebastian Garcia |
| 36 | APU Especialidad Electricidad |  |  |  |  | 6d → 3d | 38, Plano Planta de Enchufe (Circuito y Canalizacion) - Todos los Pisos - Detalles, 39 → 38, 39 | resources David Gonzales → Sebastian Garcia |
| 37 | **ANTECEDENTES** |  |  |  |  | 3d → 0d |  | resources David Gonzales → Sebastian Garcia |
| 38 | Plano Planta de Alumbrado (Circuito y Canalizacion) - Todos los Pisos - Detalles |  |  |  |  | 3d → 0d |  | resources David Gonzales → Sebastian Garcia |
| 39 | Plano Detalle Esquema Unifilar - Cuadro de Carga |  |  |  |  | 3d → 0d |  | resources David Gonzales → Sebastian Garcia |
| 40 | **PRESUPUESTO** | 2025-06-13 → 2025-06-09 (-4d) | 2025-06-18 → 2025-06-13 (-5d) |  |  |  |  |  |
| 41 | **DOCUMENTOS** | 2025-06-13 → 2025-06-09 (-4d) | 2025-06-18 → 2025-06-13 (-5d) |  |  |  |  |  |
| 42 | APU - Generales | 2025-06-13 → 2025-06-09 (-4d) | 2025-06-18 → 2025-06-13 (-5d) |  |  |  | 15, 28, Itemizado Seccion Sanitario, 35 → 15, 28, 35 |  |
| 43 | Itemizado Presupeusto Alternativa A | 2025-06-13 → 2025-06-09 (-4d) | 2025-06-18 → 2025-06-13 (-5d) |  |  |  | 15, 28, Itemizado Seccion Sanitario, 35 → 15, 28, 35 |  |
| 44 | Itemizado Presupeusto Alternativa B | 2025-06-13 → 2025-06-09 (-4d) | 2025-06-18 → 2025-06-13 (-5d) |  |  |  | 15, 28, Itemizado Seccion Sanitario, 35 → 15, 28, 35 |  |
| 45 | Programa de Ejecucion - Plazo Estimado | 2025-06-13 → 2025-06-09 (-4d) | 2025-06-18 → 2025-06-13 (-5d) |  |  |  | 15, 28, Itemizado Seccion Sanitario, 35 → 15, 28, 35 |  |

## Version 3 (data date 2025-06-02, saved 2025-06-03, file P007_SISTEMA_KARCE.xml)

Note of the change: Agregada la carpeta DOCs con mpp y xml

Last finish 2025-06-18 → 2025-06-24 (+6d). Complete tasks 2 → 6.

Added:

| ID | Task | Duration | Start | Finish | Predecessors | Resources |
| --- | --- | --- | --- | --- | --- | --- |
| 20 | Plano Detalle de Puerta y Ventana | 3d | 2025-06-03 | 2025-06-06 | 17 | Tamara Barraza |
| 21 | Plano Detalle de Areas Humedas | 3d | 2025-06-03 | 2025-06-06 | 17 | Tamara Barraza |
| 23 | Plano Detalle de Cierre Perimetral | 3d | 2025-06-06 | 2025-06-11 | 20 | Tamara Barraza |
| 33 | Plano Planta de Estructura 1/50 Todos los Pisos - Detalles | 2d | 2025-06-03 | 2025-06-05 | 17 | Jason Apablaza |
| 34 | Plano Planta de Estructura Cubierta - Detalles | 2d | 2025-06-03 | 2025-06-05 | 17 | Jason Apablaza |
| 35 | Plano Elevaciones Ejes Estructurales | 2d | 2025-06-03 | 2025-06-05 | 17 | Jason Apablaza |
| 36 | **SANITARIO** | 5d | 2025-06-03 A | 2025-06-10 |  | Emanuel Busto |
| 37 | **DOCUMENTOS** | 5d | 2025-06-03 A | 2025-06-10 |  | Emanuel Busto |
| 38 | Factibilidad Sanitaria (Tramitacion Solicitud) | 1d | 2025-06-03 | 2025-06-04 | 6, 7 | Emanuel Busto |
| 39 | Memoria de Calculo | 2d | 2025-06-06 A | 2025-06-10 A | 46, 47 | Emanuel Busto |
| 40 | Cuadro de Presion AP | 2d | 2025-06-06 A | 2025-06-10 A | 46, 47 | Emanuel Busto |
| 41 | Especificaciones Tecnicas AP | 2d | 2025-06-06 A | 2025-06-10 A | 46, 47 | Emanuel Busto |
| 42 | Especificaciones Tecnicas ALC | 2d | 2025-06-06 A | 2025-06-10 A | 46, 47 | Emanuel Busto |
| 43 | Itemizado Seccion Sanitario | 2d | 2025-06-06 | 2025-06-10 | 46, 47 | Emanuel Busto |
| 44 | APU Especialidad Sanitario | 2d | 2025-06-06 | 2025-06-10 | 46, 47 | Emanuel Busto |
| 45 | **ANTECEDENTES** | 3d | 2025-06-03 A | 2025-06-06 |  | Emanuel Busto |
| 46 | Plano Planta de Distribusion AP-AF - Todos los Pisos - Detalles | 3d | 2025-06-03 A | 2025-06-06 | 17 | Emanuel Busto |
| 47 | Plano Planta de Distribucion ALC - Todos los Pisos - Detalles | 3d | 2025-06-03 A | 2025-06-06 | 17 | Emanuel Busto |
| 57 | Plano Planta de Enchufe (Circuito y Canalizacion) - Todos los Pisos - Detalles | 3d | 2025-06-02 | 2025-06-05 |  | David Gonzales |

Changed:

| ID | Task | Start | Finish | Duration | Complete | Total float | Predecessors | Other |
| --- | --- | --- | --- | --- | --- | --- | --- | --- |
| 1 | **P007 - REPOSICIÓN SEDE SOCIAL JV KATHERINE ARCE PRB BARRIO KATHERINE ARCE-SANTA ROSA** |  | 2025-06-18 → 2025-06-24 (+6d) | 11d → 14d | 6% → 11% |  |  | was named P011 - CONSTRUCCIÓN VÍA SEMIPEATONAL Y CRUCES PEATONALES PRB BARRIO CALICHE II Y III |
| 2 | **FORMULACION DE PROYECTO** | 2025-06-02 A | 2025-06-18 → 2025-06-24 (+6d) | 11d → 14d |  |  |  |  |
| 3 | **DOCUMENTOS** | 2025-06-02 A | 2025-06-18 → 2025-06-24 (+6d) | 11d → 14d |  |  |  |  |
| 4 | Formulario Presentacion de Proyecto FRIL | 2025-06-13 → 2025-06-18 (+5d) | 2025-06-18 → 2025-06-24 (+6d) |  |  |  | 10, 59, 26, 48, 65 → 10, 59, 26, 36, 48, 65 |  |
| 10 | **ARQUITECTURA** |  | 2025-06-10 → 2025-06-16 (+6d) | 6d → 9d | 21% → 8% |  |  | resources Daniel Quian → Tamara Barraza |
| 11 | **DOCUMENTOS** |  | 2025-06-10 → 2025-06-16 (+6d) | 2d → 5d |  |  |  | resources Daniel Quian → Tamara Barraza |
| 12 | Relleno de Formulario DOM AP (Ingreso DOM) | 2025-06-06 → 2025-06-12 (+6d) | 2025-06-09 → 2025-06-13 (+4d) |  |  |  | 16, 17, 18, 19, 22, 24 → 16, 17, 18, 19, 20, 21, 22, 23, 24 | was named Relleno de Formulario DOM (Ingreso DOM); resources Daniel Quian → Tamara Barraza |
| 13 | Especifiaciones Tecnicas - Arquitectura | 2025-06-06 → 2025-06-12 (+6d) | 2025-06-10 → 2025-06-16 (+6d) |  |  |  | 16, 17, 18, 19, 22, 24 → 16, 17, 18, 19, 20, 21, 22, 23, 24 | resources Daniel Quian → Tamara Barraza |
| 14 | Memoria de Diseño universal |  |  |  |  | 3d → 6d |  | resources Daniel Quian → Tamara Barraza |
| 15 | **ANTECEDENTES** |  | 2025-06-09 → 2025-06-13 (+4d) | 5d → 8d | 27% → 10% |  |  | resources Daniel Quian → Tamara Barraza |
| 16 | Plano Lamina Normativa - Emplazamiento |  |  |  |  | 2d → 5.2d |  | resources Daniel Quian → Tamara Barraza |
| 17 | Pano Planta de Arquitectura 1/50 - Todos los Pisos |  |  |  |  |  |  | resources Daniel Quian → Tamara Barraza |
| 18 | Plano Secciones y Elevaciones 1/50 |  |  |  |  |  |  | resources Daniel Quian → Tamara Barraza |
| 19 | Plano de Accesibilidad Universal |  |  |  |  | 0d → 3.2d |  | resources Daniel Quian → Tamara Barraza |
| 22 | Plano Detalles Constructivos | 2025-06-02 A → 2025-06-06 (+4d) | 2025-06-05 → 2025-06-11 (+6d) |  | 25% → 0% | 1d → 0.2d | none → 20 | resources Daniel Quian → Tamara Barraza |
| 24 | Plano Detalles Complementarios | 2025-06-02 A → 2025-06-06 (+4d) | 2025-06-05 → 2025-06-11 (+6d) |  | 25% → 0% | 1d → 0.2d | none → 20 | resources Daniel Quian → Tamara Barraza |
| 25 | Armado de Laminas Presentacion | 2025-06-06 → 2025-06-12 A (+6d) | 2025-06-09 → 2025-06-13 (+4d) |  | 0% → 20% |  | 16, 17, 18, 19, 22, 24 → 16, 17, 18, 19, 20, 21, 22, 23, 24 | resources Daniel Quian → Tamara Barraza |
| 26 | **ESTRUCTURA** | 2025-06-02 A | 2025-06-09 → 2025-06-06 (-3d) | 5d → 4d |  | 2d → 7d |  | resources Gonzalo Reyes → Jason Apablaza |
| 27 | **DOCUMENTOS** | 2025-06-02 A | 2025-06-09 → 2025-06-06 (-3d) | 5d → 4d |  | 3d → 7d |  | resources Gonzalo Reyes → Jason Apablaza |
| 28 | Memoria de Calculo | 2025-06-06 → 2025-06-05 (-1d) | 2025-06-09 → 2025-06-06 (-3d) |  |  | 3d → 7d | 32 → 32, 33, 34, 35 | resources Gonzalo Reyes → Jason Apablaza |
| 29 | Especificaciones Tecnicas - Estructura | 2025-06-06 → 2025-06-05 (-1d) | 2025-06-09 → 2025-06-06 (-3d) |  |  | 3d → 7d | 32 → 32, 33, 34, 35 | resources Gonzalo Reyes → Jason Apablaza |
| 30 | Mecanica de Suelo |  |  |  |  | 7d → 10d |  | resources Gonzalo Reyes → Jason Apablaza |
| 31 | **ANTECEDENTES** |  | 2025-06-06 → 2025-06-05 (-1d) | 3d → 2d |  | 1d → 5d |  | resources Gonzalo Reyes → Jason Apablaza |
| 32 | Plano Planta de Fundacion 1/50 - Detalles |  | 2025-06-06 → 2025-06-05 (-1d) | 3d → 2d |  | 1d → 5d |  | was named Plano Planta de Pavimento 1/50 - Detalles; resources Gonzalo Reyes → Jason Apablaza |
| 48 | **ELECTRICO** |  |  |  |  | 0d → 3d |  | resources Sebastian Garcia → David Gonzales |
| 49 | **DOCUMENTOS** |  |  |  |  | 0d → 3d |  | resources Sebastian Garcia → David Gonzales |
| 50 | Factibilidad Electrica (Tramitacion Solicitud) |  |  |  |  | 3d → 6d | 56, 58 → 56, 57, 58 | resources Sebastian Garcia → David Gonzales |
| 51 | Memoria de Calculo |  |  |  |  | 3d → 6d | 56, 58 → 56, 57, 58 | resources Sebastian Garcia → David Gonzales |
| 52 | Especificaciones Tecnicas ELEC |  |  |  |  | 3d → 6d | 56, 58 → 56, 57, 58 | resources Sebastian Garcia → David Gonzales |
| 53 | Itemizado Seccion Electricidad |  |  |  |  | 0d → 3d | 56, 58 → 56, 57, 58 | resources Sebastian Garcia → David Gonzales |
| 54 | APU Especialidad Electricidad |  |  |  |  | 3d → 6d | 56, 58 → 56, 57, 58 | resources Sebastian Garcia → David Gonzales |
| 55 | **ANTECEDENTES** |  |  |  |  | 0d → 3d |  | resources Sebastian Garcia → David Gonzales |
| 56 | Plano Planta de Alumbrado (Circuito y Canalizacion) - Todos los Pisos - Detalles |  |  |  |  | 0d → 3d |  | resources Sebastian Garcia → David Gonzales |
| 58 | Plano Detalle Esquema Unifilar - Cuadro de Carga |  |  |  |  | 0d → 3d |  | resources Sebastian Garcia → David Gonzales |
| 59 | **PRESUPUESTO** | 2025-06-09 → 2025-06-13 (+4d) | 2025-06-13 → 2025-06-18 (+5d) |  |  |  |  |  |
| 60 | **DOCUMENTOS** | 2025-06-09 → 2025-06-13 (+4d) | 2025-06-13 → 2025-06-18 (+5d) |  |  |  |  |  |
| 61 | APU - Generales | 2025-06-09 → 2025-06-13 (+4d) | 2025-06-13 → 2025-06-18 (+5d) |  |  |  | 15, 31, 53 → 15, 31, 43, 53 |  |
| 62 | Itemizado Presupeusto Alternativa A | 2025-06-09 → 2025-06-13 (+4d) | 2025-06-13 → 2025-06-18 (+5d) |  |  |  | 15, 31, 53 → 15, 31, 43, 53 |  |
| 63 | Itemizado Presupeusto Alternativa B | 2025-06-09 → 2025-06-13 (+4d) | 2025-06-13 → 2025-06-18 (+5d) |  |  |  | 15, 31, 53 → 15, 31, 43, 53 |  |
| 64 | Programa de Ejecucion - Plazo Estimado | 2025-06-09 → 2025-06-13 (+4d) | 2025-06-13 → 2025-06-18 (+5d) |  |  |  | 15, 31, 53 → 15, 31, 43, 53 |  |

## Version 4 (data date 2025-06-02, saved 2025-06-03, file P011_SISTEMA_CII-III.xml)

Note of the change: Agregada la carpeta DOCs con mpp y xml

Last finish 2025-06-24 → 2025-06-18 (-6d). Complete tasks 6 → 2.

Removed: 20 Plano Detalle de Puerta y Ventana; 21 Plano Detalle de Areas Humedas; 23 Plano Detalle de Cierre Perimetral; 33 Plano Planta de Estructura 1/50 Todos los Pisos - Detalles; 34 Plano Planta de Estructura Cubierta - Detalles; 35 Plano Elevaciones Ejes Estructurales; 36 SANITARIO; 37 DOCUMENTOS; 38 Factibilidad Sanitaria (Tramitacion Solicitud); 39 Memoria de Calculo; 40 Cuadro de Presion AP; 41 Especificaciones Tecnicas AP; 42 Especificaciones Tecnicas ALC; 43 Itemizado Seccion Sanitario; 44 APU Especialidad Sanitario; 45 ANTECEDENTES; 46 Plano Planta de Distribusion AP-AF - Todos los Pisos - Detalles; 47 Plano Planta de Distribucion ALC - Todos los Pisos - Detalles; 57 Plano Planta de Enchufe (Circuito y Canalizacion) - Todos los Pisos - Detalles

Changed:

| ID | Task | Start | Finish | Duration | Complete | Total float | Predecessors | Other |
| --- | --- | --- | --- | --- | --- | --- | --- | --- |
| 1 | **P011 - CONSTRUCCIÓN VÍA SEMIPEATONAL Y CRUCES PEATONALES PRB BARRIO CALICHE II Y III** |  | 2025-06-24 → 2025-06-18 (-6d) | 14d → 11d | 11% → 6% |  |  | was named P007 - REPOSICIÓN SEDE SOCIAL JV KATHERINE ARCE PRB BARRIO KATHERINE ARCE-SANTA ROSA |
| 2 | **FORMULACION DE PROYECTO** | 2025-06-02 A → 2025-06-02 | 2025-06-24 → 2025-06-18 (-6d) | 14d → 11d |  |  |  |  |
| 3 | **DOCUMENTOS** | 2025-06-02 A → 2025-06-02 | 2025-06-24 → 2025-06-18 (-6d) | 14d → 11d |  |  |  |  |
| 4 | Formulario Presentacion de Proyecto FRIL | 2025-06-18 → 2025-06-13 (-5d) | 2025-06-24 → 2025-06-18 (-6d) |  |  |  | 10, 40, 23, SANITARIO, 30, 46 → 10, 40, 23, 30, 46 |  |
| 10 | **ARQUITECTURA** |  | 2025-06-16 → 2025-06-10 (-6d) | 9d → 6d | 8% → 21% |  |  | resources Tamara Barraza → Daniel Quian |
| 11 | **DOCUMENTOS** |  | 2025-06-16 → 2025-06-10 (-6d) | 5d → 2d |  |  |  | resources Tamara Barraza → Daniel Quian |
| 12 | Relleno de Formulario DOM (Ingreso DOM) | 2025-06-12 → 2025-06-06 (-6d) | 2025-06-13 → 2025-06-09 (-4d) |  |  |  | 16, 17, 18, 19, Plano Detalle de Puerta y Ventana, Plano Detalle de Areas Humedas, 20, Plano Detalle de Cierre Perimetral, 21 → 16, 17, 18, 19, 20, 21 | was named Relleno de Formulario DOM AP (Ingreso DOM); resources Tamara Barraza → Daniel Quian |
| 13 | Especifiaciones Tecnicas - Arquitectura | 2025-06-12 → 2025-06-06 (-6d) | 2025-06-16 → 2025-06-10 (-6d) |  |  |  | 16, 17, 18, 19, Plano Detalle de Puerta y Ventana, Plano Detalle de Areas Humedas, 20, Plano Detalle de Cierre Perimetral, 21 → 16, 17, 18, 19, 20, 21 | resources Tamara Barraza → Daniel Quian |
| 14 | Memoria de Diseño universal |  |  |  |  | 6d → 3d |  | resources Tamara Barraza → Daniel Quian |
| 15 | **ANTECEDENTES** |  | 2025-06-13 → 2025-06-09 (-4d) | 8d → 5d | 10% → 27% |  |  | resources Tamara Barraza → Daniel Quian |
| 16 | Plano Lamina Normativa - Emplazamiento |  |  |  |  | 5.2d → 2d |  | resources Tamara Barraza → Daniel Quian |
| 17 | Pano Planta de Arquitectura 1/50 - Todos los Pisos |  |  |  |  |  |  | resources Tamara Barraza → Daniel Quian |
| 18 | Plano Secciones y Elevaciones 1/50 |  |  |  |  |  |  | resources Tamara Barraza → Daniel Quian |
| 19 | Plano de Accesibilidad Universal |  |  |  |  | 3.2d → 0d |  | resources Tamara Barraza → Daniel Quian |
| 20 | Plano Detalles Constructivos | 2025-06-06 → 2025-06-02 A (-4d) | 2025-06-11 → 2025-06-05 (-6d) |  | 0% → 25% | 0.2d → 1d | Plano Detalle de Puerta y Ventana → none | resources Tamara Barraza → Daniel Quian |
| 21 | Plano Detalles Complementarios | 2025-06-06 → 2025-06-02 A (-4d) | 2025-06-11 → 2025-06-05 (-6d) |  | 0% → 25% | 0.2d → 1d | Plano Detalle de Puerta y Ventana → none | resources Tamara Barraza → Daniel Quian |
| 22 | Armado de Laminas Presentacion | 2025-06-12 A → 2025-06-06 (-6d) | 2025-06-13 → 2025-06-09 (-4d) |  | 20% → 0% |  | 16, 17, 18, 19, Plano Detalle de Puerta y Ventana, Plano Detalle de Areas Humedas, 20, Plano Detalle de Cierre Perimetral, 21 → 16, 17, 18, 19, 20, 21 | resources Tamara Barraza → Daniel Quian |
| 23 | **ESTRUCTURA** | 2025-06-02 A → 2025-06-02 | 2025-06-06 → 2025-06-09 (+3d) | 4d → 5d |  | 7d → 2d |  | resources Jason Apablaza → Gonzalo Reyes |
| 24 | **DOCUMENTOS** | 2025-06-02 A → 2025-06-02 | 2025-06-06 → 2025-06-09 (+3d) | 4d → 5d |  | 7d → 3d |  | resources Jason Apablaza → Gonzalo Reyes |
| 25 | Memoria de Calculo | 2025-06-05 → 2025-06-06 (+1d) | 2025-06-06 → 2025-06-09 (+3d) |  |  | 7d → 3d | 29, Plano Planta de Estructura 1/50 Todos los Pisos - Detalles, Plano Planta de Estructura Cubierta - Detalles, Plano Elevaciones Ejes Estructurales → 29 | resources Jason Apablaza → Gonzalo Reyes |
| 26 | Especificaciones Tecnicas - Estructura | 2025-06-05 → 2025-06-06 (+1d) | 2025-06-06 → 2025-06-09 (+3d) |  |  | 7d → 3d | 29, Plano Planta de Estructura 1/50 Todos los Pisos - Detalles, Plano Planta de Estructura Cubierta - Detalles, Plano Elevaciones Ejes Estructurales → 29 | resources Jason Apablaza → Gonzalo Reyes |
| 27 | Mecanica de Suelo |  |  |  |  | 10d → 7d |  | resources Jason Apablaza → Gonzalo Reyes |
| 28 | **ANTECEDENTES** |  | 2025-06-05 → 2025-06-06 (+1d) | 2d → 3d |  | 5d → 1d |  | resources Jason Apablaza → Gonzalo Reyes |
| 29 | Plano Planta de Pavimento 1/50 - Detalles |  | 2025-06-05 → 2025-06-06 (+1d) | 2d → 3d |  | 5d → 1d |  | was named Plano Planta de Fundacion 1/50 - Detalles; resources Jason Apablaza → Gonzalo Reyes |
| 30 | **ELECTRICO** |  |  |  |  | 3d → 0d |  | resources David Gonzales → Sebastian Garcia |
| 31 | **DOCUMENTOS** |  |  |  |  | 3d → 0d |  | resources David Gonzales → Sebastian Garcia |
| 32 | Factibilidad Electrica (Tramitacion Solicitud) |  |  |  |  | 6d → 3d | 38, Plano Planta de Enchufe (Circuito y Canalizacion) - Todos los Pisos - Detalles, 39 → 38, 39 | resources David Gonzales → Sebastian Garcia |
| 33 | Memoria de Calculo |  |  |  |  | 6d → 3d | 38, Plano Planta de Enchufe (Circuito y Canalizacion) - Todos los Pisos - Detalles, 39 → 38, 39 | resources David Gonzales → Sebastian Garcia |
| 34 | Especificaciones Tecnicas ELEC |  |  |  |  | 6d → 3d | 38, Plano Planta de Enchufe (Circuito y Canalizacion) - Todos los Pisos - Detalles, 39 → 38, 39 | resources David Gonzales → Sebastian Garcia |
| 35 | Itemizado Seccion Electricidad |  |  |  |  | 3d → 0d | 38, Plano Planta de Enchufe (Circuito y Canalizacion) - Todos los Pisos - Detalles, 39 → 38, 39 | resources David Gonzales → Sebastian Garcia |
| 36 | APU Especialidad Electricidad |  |  |  |  | 6d → 3d | 38, Plano Planta de Enchufe (Circuito y Canalizacion) - Todos los Pisos - Detalles, 39 → 38, 39 | resources David Gonzales → Sebastian Garcia |
| 37 | **ANTECEDENTES** |  |  |  |  | 3d → 0d |  | resources David Gonzales → Sebastian Garcia |
| 38 | Plano Planta de Alumbrado (Circuito y Canalizacion) - Todos los Pisos - Detalles |  |  |  |  | 3d → 0d |  | resources David Gonzales → Sebastian Garcia |
| 39 | Plano Detalle Esquema Unifilar - Cuadro de Carga |  |  |  |  | 3d → 0d |  | resources David Gonzales → Sebastian Garcia |
| 40 | **PRESUPUESTO** | 2025-06-13 → 2025-06-09 (-4d) | 2025-06-18 → 2025-06-13 (-5d) |  |  |  |  |  |
| 41 | **DOCUMENTOS** | 2025-06-13 → 2025-06-09 (-4d) | 2025-06-18 → 2025-06-13 (-5d) |  |  |  |  |  |
| 42 | APU - Generales | 2025-06-13 → 2025-06-09 (-4d) | 2025-06-18 → 2025-06-13 (-5d) |  |  |  | 15, 28, Itemizado Seccion Sanitario, 35 → 15, 28, 35 |  |
| 43 | Itemizado Presupeusto Alternativa A | 2025-06-13 → 2025-06-09 (-4d) | 2025-06-18 → 2025-06-13 (-5d) |  |  |  | 15, 28, Itemizado Seccion Sanitario, 35 → 15, 28, 35 |  |
| 44 | Itemizado Presupeusto Alternativa B | 2025-06-13 → 2025-06-09 (-4d) | 2025-06-18 → 2025-06-13 (-5d) |  |  |  | 15, 28, Itemizado Seccion Sanitario, 35 → 15, 28, 35 |  |
| 45 | Programa de Ejecucion - Plazo Estimado | 2025-06-13 → 2025-06-09 (-4d) | 2025-06-18 → 2025-06-13 (-5d) |  |  |  | 15, 28, Itemizado Seccion Sanitario, 35 → 15, 28, 35 |  |
